# LocalInformationSystem

How a schedule from MS Project changed from version to version. A marks actual dates.

## Version 1 (saved 2003-05-02, file ANSA Project Plan Template.mpt)

Note of the change: done

| ID | WBS | Task | Duration | Start | Finish | Predecessors | Total float |
| --- | --- | --- | --- | --- | --- | --- | --- |
| 1 | 1 | **Kế hoạch sơ bộ phát triển Simple Portal** | 165d? | 2003-05-02 | 2003-11-28 |  | 0d |
| 2 | 1.1 | **Khởi động** | 15d? | 2003-05-02 | 2003-05-21 |  | 0d |
| 3 | 1.1.1 | **Phát biểu phạm vi hệ thống** | 10d | 2003-05-02 | 2003-05-14 |  | 5d |
| 4 |  | Phát triển Vision | 10d | 2003-05-02 | 2003-05-14 |  | 5d |
| 5 |  | Danh sách rủi ro | 0.5d | 2003-05-02 | 2003-05-02 |  | 14.5d |
| 6 |  | Review | 0.5d | 2003-05-02 | 2003-05-02 |  | 14.5d |
| 7 | 1.1.2 | **Lên kế hoạch và Sơ phác Busieness Use Case** | 0.5d | 2003-05-02 | 2003-05-02 |  | 13.5d |
| 8 |  | Lập Kế hoạch phát triển dự án | 0.5d | 2003-05-02 | 2003-05-02 |  | 13.5d |
| 9 |  | Sơ tính chi phí và ước lượng thời gian | 0.5d | 2003-05-02 | 2003-05-02 |  | 13.5d |
| 10 |  | Định nghĩa các phương pháp giảm thiểu rủi ro | 0.5d | 2003-05-02 | 2003-05-02 |  | 13.5d |
| 11 |  | Review | 0.5d | 2003-05-02 | 2003-05-02 |  | 13.5d |
| 12 | 1.1.3 | **Tổng hợp và xác định mô hình kiến trúc của sản phẩm** | 15d? | 2003-05-02 | 2003-05-21 |  | 0d |
| 13 |  | Lập Business Use case | 10d | 2003-05-02 | 2003-05-14 |  | 5d |
| 14 |  | Ước lượng và xác định thời gian cho việc thử nghiệm công nghệ | 0.5d | 2003-05-02 | 2003-05-02 |  | 14.5d |
| 15 |  | Lập các Propotype cho công nghệ mới sẽ sử dụng | 15d | 2003-05-02 | 2003-05-21 |  | 0d |
| 16 |  | Review | 1d? | 2003-05-02 | 2003-05-02 |  | 14d |
| 17 |  | Chuẩn bị môi trường cho đội dự án | 2d | 2003-05-02 | 2003-05-05 |  | 13d |
| 18 |  | Hoàn thiện và thống nhất kế hoạch phát triển | 1d? | 2003-05-02 | 2003-05-03 | 7 | 13.5d |
| 19 |  | Sơ phác Use Case | 5d | 2003-05-02 | 2003-05-08 |  | 10d |
| 20 |  | Lên kế hoạch chi tiết cho giai đoạn Chi tiết hoá | 0.5d | 2003-05-02 | 2003-05-02 |  | 14d |
| 21 |  | Phê duyệt kế hoạch giai đoạn chi tiết hoá | 0.5d | 2003-05-02 | 2003-05-02 | 20 | 14d |
| 22 | 1.2 | **Chi tiết hoá** | 30d? | 2003-05-21 | 2003-06-27 | 2 | 0d |
| 23 |  | Định nghĩa, phê chuẩn và chỉ ra giới hạn của kiến trúc Hệ thống | 1d? | 2003-05-21 | 2003-05-22 |  | 29d |
| 24 |  | Tinh chỉnh Vision | 2d | 2003-05-21 | 2003-05-23 |  | 28d |
| 25 |  | Mô tả môi trường Test | 0.5d | 2003-05-21 | 2003-05-21 |  | 29.5d |
| 26 | 1.2.4 | **Cập nhật Các tài liệu khác** | 3d | 2003-05-21 | 2003-05-24 |  | 27d |
| 27 |  | Risk List | 3d | 2003-05-21 | 2003-05-24 |  | 27d |
| 28 |  | Business use Case | 3d | 2003-05-21 | 2003-05-24 |  | 27d |
| 29 |  | Requirement | 3d | 2003-05-21 | 2003-05-24 |  | 27d |
| 30 |  | Use case | 3d | 2003-05-21 | 2003-05-24 |  | 27d |
| 31 |  | Conding Converntion | 3d | 2003-05-21 | 2003-05-24 |  | 27d |
| 32 | 1.2.5 | **Phân tích và thiết kế chi tiết kiến trúc hệ thống** | 30d | 2003-05-21 | 2003-06-27 |  | 0d |
| 33 |  | Tài liệu kiến trúc hệ thống | 5d | 2003-05-21 | 2003-05-27 |  | 0d |
| 34 |  | Design Model | 10d | 2003-05-28 | 2003-06-09 | 33 | 0d |
| 35 |  | Data Model | 5d | 2003-06-10 | 2003-06-16 | 34 | 0d |
| 36 |  | Component Model | 10d | 2003-06-16 | 2003-06-27 | 35 | 0d |
| 37 |  | Xây dựng các Propotype " vận hành được" của các tính năng then chốt | 20d | 2003-05-21 | 2003-06-16 |  | 10d |
| 38 |  | Lên kế hoạch và base lien cho giai đoạn Xây dựng | 0.5d | 2003-05-21 | 2003-05-21 |  | 29d |
| 39 |  | Phê duyệt kế hoạch cho giai đoạn xây dựng | 0.5d | 2003-05-22 | 2003-05-22 | 38 | 29d |
| 40 | 1.3 | **Xây dựng** | 100d? | 2003-06-28 | 2003-11-04 | 22 | 0d |
| 41 |  | Lập Test suite | 10d | 2003-06-28 | 2003-07-10 |  | 90d |
| 42 |  | Quản lý tài nguyên và kiểm soát tiến trình | 10d | 2003-06-28 | 2003-07-10 |  | 90d |
| 43 |  | Codding và Unit Testing | 80d | 2003-06-28 | 2003-10-09 |  | 0d |
| 44 |  | Deloyment Model | 10d | 2003-06-28 | 2003-07-10 |  | 90d |
| 45 | 1.3.5 | **Hoàn thiện và cập nhật các tài liệu khác** | 4d | 2003-06-28 | 2003-07-03 |  | 96d |
| 46 |  | Design Model | 4d | 2003-06-28 | 2003-07-03 |  | 96d |
| 47 |  | Data Model | 4d | 2003-06-28 | 2003-07-03 |  | 96d |
| 48 |  | Component Model | 4d | 2003-06-28 | 2003-07-03 |  | 96d |
| 49 |  | Use case Model | 4d | 2003-06-28 | 2003-07-03 |  | 96d |
| 50 |  | Lập kế hoạch cho giai đoạn chuyển giao | 1d? | 2003-06-28 | 2003-06-30 |  | 99d |
| 51 |  | Technial Document | 10d | 2003-06-28 | 2003-07-10 |  | 90d |
| 52 |  | Tranning Document | 10d | 2003-06-28 | 2003-07-10 |  | 90d |
| 53 |  | Help Document | 10d | 2003-06-28 | 2003-07-10 |  | 90d |
| 54 |  | User Manual | 5d | 2003-06-28 | 2003-07-04 |  | 95d |
| 55 |  | System Requirement | 1d | 2003-06-28 | 2003-06-30 |  | 99d |
| 56 |  | Intergrattion Testing | 20d | 2003-10-09 | 2003-11-04 | 43 | 0d |
| 57 | 1.4 | **Chuyển giao** | 20d? | 2003-11-04 | 2003-11-28 | 40 | 0d |
| 58 |  | Hoàn thành các tài liệu hỗ trợ | 10d | 2003-11-04 | 2003-11-17 |  | 10d |
| 59 |  | Kiểm tra khả năng vận hành trên các Môi trường khác nhau | 10d | 2003-11-04 | 2003-11-17 |  | 10d |
| 60 |  | Tinh chỉnh sản phẩm | 10d | 2003-11-04 | 2003-11-17 |  | 10d |
| 61 |  | Đóng gói sản phẩm | 20d | 2003-11-04 | 2003-11-28 |  | 0d |
| 62 |  | Release Notes | 1d? | 2003-11-04 | 2003-11-05 |  | 19d |
| 63 |  | Tranning | 40d | 2003-05-02 | 2003-06-21 |  | 125d |

## Version 2 (saved 2003-05-02, file LocalInformationSystem Project Plan.mpp)

Note of the change: done

Last finish stays 2003-11-28. Complete tasks 0 → 4.

Changed:

| ID | Task | Start | Finish | Duration | Complete | Total float | Other |
| --- | --- | --- | --- | --- | --- | --- | --- |
| 1 | **Kế hoạch sơ bộ phát triển Simple Portal** | 2003-05-02 A |  |  | 0% → 4% |  |  |
| 2 | **Khởi động** | 2003-05-02 A |  |  | 0% → 41% |  |  |
| 3 | **Phát biểu phạm vi hệ thống** | 2003-05-02 A | 2003-05-14 → 2003-05-13 (-1d) | 10d → 9d | 0% → 84% | 5d → 6d |  |
| 4 | Phát triển Vision | 2003-05-02 A | 2003-05-14 → 2003-05-13 (-1d) | 10d → 9d | 0% → 89% | 5d → 6d | resources none → huynt |
| 5 | Danh sách rủi ro | 2003-05-02 A |  | 0.5d → 0.45d | 0% → 89% | 14.5d → 14.55d | resources none → huynt |
| 6 | Review |  |  |  |  |  | resources none → Director |
| 7 | **Lên kế hoạch và Sơ phác Busieness Use Case** | 2003-05-02 A |  |  | 0% → 72% | 13.5d → 14.5d |  |
| 8 | Lập Kế hoạch phát triển dự án | 2003-05-02 A | 2003-05-02 A |  | 0% → 100% | 13.5d → none | resources none → huynt |
| 9 | Sơ tính chi phí và ước lượng thời gian | 2003-05-02 A | 2003-05-02 A |  | 0% → 100% | 13.5d → none | resources none → huynt |
| 10 | Định nghĩa các phương pháp giảm thiểu rủi ro | 2003-05-02 A |  | 0.5d → 0.45d | 0% → 89% | 13.5d → 14.55d | resources none → huynt |
| 12 | **Tổng hợp và xác định mô hình kiến trúc của sản phẩm** | 2003-05-02 A |  |  | 0% → 15% |  |  |
| 13 | Lập Business Use case | 2003-05-02 A | 2003-05-14 → 2003-05-09 (-5d) | 10d → 6.5d | 0% → 46% | 5d → 8.5d | resources none → huynt |
| 14 | Ước lượng và xác định thời gian cho việc thử nghiệm công nghệ | 2003-05-02 A |  | 0.5d → 0.45d | 0% → 89% | 14.5d → 14.55d | resources none → huynt |
| 15 | Lập các Propotype cho công nghệ mới sẽ sử dụng |  |  |  |  |  | resources none → chungnh |
| 16 | Review |  |  |  |  |  | resources none → Director |
| 17 | Chuẩn bị môi trường cho đội dự án | 2003-05-02 A | 2003-05-05 A |  | 0% → 100% | 13d → none | resources none → huynt |
| 18 | Hoàn thiện và thống nhất kế hoạch phát triển | 2003-05-02 A | 2003-05-03 A |  | 0% → 100% | 13.5d → none | resources none → huynt |
| 19 | Sơ phác Use Case | 2003-05-02 A | 2003-05-08 → 2003-05-06 (-2d) | 5d → 3d | 0% → 33% | 10d → 12d | resources none → huynt |
| 20 | Lên kế hoạch chi tiết cho giai đoạn Chi tiết hoá |  |  | 0.5d → 1d |  | 14d → 13.5d | resources none → huynt |
| 21 | Phê duyệt kế hoạch giai đoạn chi tiết hoá | 2003-05-02 → 2003-05-03 (+1d) | 2003-05-02 → 2003-05-03 (+1d) |  |  | 14d → 13.5d | resources none → Director |
| 23 | Định nghĩa, phê chuẩn và chỉ ra giới hạn của kiến trúc Hệ thống |  | 2003-05-22 → 2003-05-21 (-1d) | 1d? → 0.5d? |  | 29d → 29.5d | resources none → huynt |
| 24 | Tinh chỉnh Vision |  | 2003-05-23 → 2003-05-22 (-1d) | 2d → 1d |  | 28d → 29d | resources none → huynt |
| 25 | Mô tả môi trường Test |  |  |  |  |  | resources none → chungnh |
| 27 | Risk List |  | 2003-05-24 → 2003-05-22 (-2d) | 3d → 1.5d |  | 27d → 28.5d | resources none → huynt |
| 28 | Business use Case |  | 2003-05-24 → 2003-05-22 (-2d) | 3d → 1.5d |  | 27d → 28.5d | resources none → huynt |
| 29 | Requirement |  | 2003-05-24 → 2003-05-22 (-2d) | 3d → 1.5d |  | 27d → 28.5d | resources none → huynt |
| 30 | Use case |  | 2003-05-24 → 2003-05-22 (-2d) | 3d → 1.5d |  | 27d → 28.5d | resources none → huynt |
| 31 | Conding Converntion |  |  |  |  |  | resources none → chungnh |
| 33 | Tài liệu kiến trúc hệ thống |  | 2003-05-27 → 2003-05-22 (-5d) | 5d → 1d |  |  | resources none → huynt |
| 34 | Design Model | 2003-05-28 → 2003-05-22 (-6d) | 2003-06-09 → 2003-06-10 (+1d) | 10d → 15d |  |  | resources none → huynt |
| 35 | Data Model | 2003-06-10 → 2003-06-11 (+1d) | 2003-06-16 → 2003-06-23 (+7d) | 5d → 10d |  |  | resources none → huynt |
| 36 | Component Model | 2003-06-16 → 2003-06-24 (+8d) |  | 10d → 4d |  |  | resources none → huynt |
| 37 | Xây dựng các Propotype " vận hành được" của các tính năng then chốt |  |  |  |  |  | resources none → chungnh |
| 38 | Lên kế hoạch và base lie cho giai đoạn Xây dựng |  |  |  |  |  | was named Lên kế hoạch và base lien cho giai đoạn Xây dựng; resources none → huynt |
| 39 | Phê duyệt kế hoạch cho giai đoạn xây dựng |  |  |  |  |  | resources none → Director |
| 40 | **Xây dựng** |  |  | 100d? → 100d |  |  |  |
| 41 | Lập Test suite |  |  |  |  |  | resources none → chungnh |
| 42 | Quản lý tài nguyên và kiểm soát tiến trình |  | 2003-07-10 → 2003-07-04 (-6d) | 10d → 5d |  | 90d → 95d | resources none → huynt |
| 43 | Codding và Unit Testing |  |  |  |  |  | resources none → Lập trình viên 3; chungnh; Lập trình viên 2 |
| 44 | Deloyment Model |  |  |  |  |  | resources none → chungnh; Lập trình viên 2; Lập trình viên 3 |
| 45 | **Hoàn thiện và cập nhật các tài liệu khác** |  | 2003-07-03 → 2003-07-10 (+7d) | 4d → 10d |  | 96d → 90d |  |
| 46 | Design Model |  | 2003-07-03 → 2003-07-10 (+7d) | 4d → 10d |  | 96d → 90d | resources none → huynt; chungnh; Lập trình viên 2 |
| 47 | Data Model |  | 2003-07-03 → 2003-07-10 (+7d) | 4d → 10d |  | 96d → 90d | resources none → huynt; chungnh; Lập trình viên 2 |
| 48 | Component Model |  | 2003-07-03 → 2003-07-10 (+7d) | 4d → 10d |  | 96d → 90d | resources none → huynt; chungnh; Lập trình viên 2 |
| 49 | Use case Model |  | 2003-07-03 → 2003-07-10 (+7d) | 4d → 10d |  | 96d → 90d | resources none → huynt; chungnh; Lập trình viên 2 |
| 50 | Lập kế hoạch cho giai đoạn chuyển giao |  |  | 1d? → 1d |  |  | resources none → huynt; chungnh; Lập trình viên 2 |
| 51 | Technial Document |  |  |  |  |  | resources none → chungnh; Lập trình viên 2; Lập trình viên 3; huynt |
| 52 | Tranning Document |  |  |  |  |  | resources none → chungnh; Lập trình viên 2; Lập trình viên 3; huynt |
| 53 | Help Document |  |  |  |  |  | resources none → chungnh; Lập trình viên 2; Lập trình viên 3; huynt |
| 54 | User Manual |  |  |  |  |  | resources none → chungnh; Lập trình viên 2; Lập trình viên 3; huynt |
| 55 | System Requirement |  |  |  |  |  | resources none → chungnh; Lập trình viên 2; Lập trình viên 3; huynt |
| 56 | Intergrattion Testing |  |  |  |  |  | resources none → chungnh; Lập trình viên 2; Lập trình viên 3; huynt |
| 58 | Hoàn thành các tài liệu hỗ trợ |  |  |  |  |  | resources none → chungnh; Lập trình viên 2; Lập trình viên 3; huynt [50%] |
| 59 | Kiểm tra khả năng vận hành trên các Môi trường khác nhau |  |  |  |  |  | resources none → chungnh; Lập trình viên 2; Lập trình viên 3; huynt |
| 60 | Tinh chỉnh sản phẩm |  |  |  |  |  | resources none → chungnh; Lập trình viên 2; Lập trình viên 3; huynt |
| 61 | Đóng gói sản phẩm |  |  |  |  |  | resources none → chungnh; Lập trình viên 2; Lập trình viên 3; huynt |
| 62 | Release Notes |  |  |  |  |  | resources none → chungnh; Lập trình viên 2; Lập trình viên 3; huynt |
| 63 | Tranning |  |  |  |  |  | resources none → chungnh; Lập trình viên 2; Lập trình viên 3; huynt |
